# CRM Online

How a schedule from MS Project changed from version to version. A marks actual dates.

## Version 1 (saved 2012-09-10, file Cronograma Entregas.mpp)

| ID | WBS | Task | Duration | Start | Finish | Predecessors | Complete | Total float | Constraint |
| --- | --- | --- | --- | --- | --- | --- | --- | --- | --- |
| 1 | 1 | **Entrega 03** | 13.25d | 2012-09-01 A | 2012-09-18 |  | 32% | 36.88d |  |
| 2 | 1.1 | **Especificação** | 7.88d | 2012-09-07 A | 2012-09-17 |  | 17% | 37.62d |  |
| 3 |  | Introdução | 2.5d | 2012-09-10 | 2012-09-12 |  |  | 44d | start no earlier than 2012-09-08 |
| 4 |  | Descrição Geral | 2.5d | 2012-09-07 A | 2012-09-10 |  | 80% | 0d | start no earlier than 2012-09-06 |
| 5 | 1.1.3 | **Requisitos Específicos** | 6.25d | 2012-09-10 | 2012-09-17 |  |  | 28.12d |  |
| 6 |  | Requisitos Funcionais | 3d | 2012-09-10 | 2012-09-12 |  |  | 34.5d | start no earlier than 2012-09-08 |
| 7 |  | Requisitos Não Funcionais | 3.75d | 2012-09-12 | 2012-09-17 | 3 |  | 44d | start no earlier than 2012-09-04 |
| 8 | 1.2 | **Diagramas** | 13.25d | 2012-09-01 A | 2012-09-18 |  | 46% | 34.5d |  |
| 9 |  | Casos de Uso | 2d | 2012-09-01 A | 2012-09-04 A |  | 100% |  | start no earlier than 2012-09-01 |
| 10 | 1.2.2 | **Sequência** | 1d | 2012-09-10 | 2012-09-11 |  |  | 0d |  |
| 11 |  | Gerenciar Permissões de Usuários | 1d | 2012-09-10 | 2012-09-11 | 4 |  | 0d |  |
| 12 |  | Atividades (incl. Atores) | 2d | 2012-09-11 | 2012-09-13 | 11 |  | 0d |  |
| 13 |  | Classes de Domínio | 2d | 2012-09-04 A | 2012-09-06 A | 9 | 100% |  | start no earlier than 2012-09-01 |
| 14 |  | Componentes | 2d | 2012-09-13 | 2012-09-14 | 6 |  | 34.5d |  |
| 15 |  | Implantação | 2d | 2012-09-15 | 2012-09-18 | 14 |  | 34.5d |  |
| 16 |  | Banco de Dados | 2d | 2012-09-10 A | 2012-09-11 A |  | 100% |  | start no earlier than 2012-09-10 |
| 17 | 2 | **Entrega 04** | 13.75d | 2012-09-12 | 2012-09-28 |  |  | 0.62d |  |
| 18 | 2.1 | **Código Fonte** | 11.25d | 2012-09-12 | 2012-09-25 |  |  | 0.62d |  |
| 19 |  | Gerenciar Clientes | 6.25d | 2012-09-13 | 2012-09-21 | 12 |  | 0d |  |
| 20 |  | Gerenciar Permissões de Usuários | 3.75d | 2012-09-19 | 2012-09-24 | 21 |  | 0.62d |  |
| 21 |  | Gerenciar Usuários | 6.25d | 2012-09-12 | 2012-09-19 | 16 |  | 0.62d |  |
| 22 |  | Gerenciar Empresa | 6.25d | 2012-09-18 | 2012-09-25 | 8 |  | 34.5d |  |
| 23 |  | Gerenciar Atividades | 6.25d | 2012-09-18 | 2012-09-25 | 15 |  | 34.5d |  |
| 24 |  | Manual | 2.5d | 2012-09-26 | 2012-09-28 | 23 |  | 34.5d |  |
| 25 |  | Store Procedure | 2.5d | 2012-09-26 | 2012-09-28 | 22 |  | 34.5d |  |
| 26 |  | Script Banco de Dados | 1.25d | 2012-09-24 | 2012-09-25 | 20 |  | 0.62d |  |
| 27 |  | Diagrama de Classes do Sistema | 3.75d | 2012-09-21 | 2012-09-26 | 19 |  | 0d |  |
| 28 | 3 | **Entrega 06** | 20d | 2012-09-26 | 2012-10-22 |  |  | 0d |  |
| 29 |  | Aplicativo Android | 12.5d | 2012-09-26 | 2012-10-11 | 26, 27 |  | 0d |  |
| 30 |  | Testes de Software | 5d | 2012-10-11 | 2012-10-18 | 29 |  | 0d |  |
| 31 |  | Avaliação de Interfaces | 2.5d | 2012-10-18 | 2012-10-22 | 30 |  | 0d |  |
| 32 | 4 | **Entrega 05** | 17.5d | 2012-10-11 | 2012-11-02 |  |  | 0d |  |
| 33 |  | Casos de Uso no GitHub | 5d | 2012-10-22 | 2012-10-27 | 28 |  | 0d |  |
| 34 |  | Classes de Teste | 5d | 2012-10-27 | 2012-11-02 | 33 |  | 0d |  |
| 35 |  | Documentação dos Ciclos de TDD | 5d | 2012-10-11 | 2012-10-18 | 29, 34 |  | 10.5d |  |
| 36 |  | Prontificação do GitHub Atualizado | 2d | 2012-10-18 | 2012-10-20 | 35 |  | 10.5d |  |

## Version 2 (saved 2012-09-19, file Cronograma Entregas.mpp)

Note of the change: inicio

Last finish 2012-11-02 → 2012-10-29 (-4d). Complete tasks 3 → 4.

Removed: 14 Componentes

Changed:

| ID | Task | Start | Finish | Duration | Complete | Total float | Predecessors | Other |
| --- | --- | --- | --- | --- | --- | --- | --- | --- |
| 1 | **Entrega 03** |  | 2012-09-18 → 2012-09-27 (+9d) | 13.25d → 21.12d | 32% → 44% | 36.88d → -4.25d |  |  |
| 2 | **Especificação** |  | 2012-09-17 → 2012-09-27 (+10d) | 7.88d → 16.5d |  | 37.62d → -4.25d |  |  |
| 3 | Introdução | 2012-09-10 → 2012-09-20 (+10d) | 2012-09-12 → 2012-09-22 (+10d) |  |  | 44d → -3.62d |  | constraint start no earlier than 2012-09-08 → start no earlier than 2012-09-19 |
| 4 | Descrição Geral |  | 2012-09-10 → 2012-09-20 (+10d) |  |  | 0d → -4d |  |  |
| 5 | **Requisitos Específicos** | 2012-09-10 → 2012-09-20 (+10d) | 2012-09-17 → 2012-09-27 (+10d) |  |  | 28.12d → -4.25d |  |  |
| 6 | Requisitos Funcionais | 2012-09-10 → 2012-09-20 (+10d) | 2012-09-12 → 2012-09-24 (+12d) |  |  | 34.5d → -0.38d |  | constraint start no earlier than 2012-09-08 → start no earlier than 2012-09-19 |
| 7 | Requisitos Não Funcionais | 2012-09-12 → 2012-09-22 (+10d) | 2012-09-17 → 2012-09-27 (+10d) |  |  | 44d → -3.62d |  | constraint start no earlier than 2012-09-04 → start no earlier than 2012-09-12 |
| 8 | **Diagramas** |  | 2012-09-18 → 2012-09-24 (+6d) | 13.25d → 18.38d | 46% → 73% | 34.5d → -2.5d |  |  |
| 10 | **Sequência** | 2012-09-10 → 2012-09-20 (+10d) | 2012-09-11 → 2012-09-21 (+10d) |  |  | 0d → -4d |  |  |
| 11 | Gerenciar Permissões de Usuários | 2012-09-10 → 2012-09-20 (+10d) | 2012-09-11 → 2012-09-21 (+10d) |  |  | 0d → -5.25d |  | constraint none → start no earlier than 2012-09-19 |
| 12 | Atividades (incl. Atores) | 2012-09-11 → 2012-09-21 (+10d) | 2012-09-13 → 2012-09-24 (+11d) |  |  | 0d → -5.25d |  | constraint none → start no earlier than 2012-09-18 |
| 14 | Implantação | 2012-09-15 → 2012-09-19 A (+4d) | 2012-09-18 → 2012-09-20 A (+2d) |  | 0% → 100% | 34.5d → none | Componentes → 13 | constraint none → start no earlier than 2012-09-15; resources Israel → Rômulo |
| 16 | **Entrega 04** | 2012-09-12 A | 2012-09-28 → 2012-10-06 (+8d) | 13.75d → 20.38d | 0% → 8% | 0.62d → -5.5d |  |  |
| 17 | **Código Fonte** | 2012-09-12 A | 2012-09-25 → 2012-10-03 (+8d) | 11.25d → 17.88d | 0% → 11% | 0.62d → -3.25d |  |  |
| 18 | Gerenciar Clientes | 2012-09-13 → 2012-09-12 A (-1d) | 2012-09-21 → 2012-09-24 (+3d) | 6.25d → 5d | 0% → 50% | 0d → 1.38d | 12 → 15 | resources Wander → Rômulo |
| 19 | Gerenciar Permissões de Usuários | 2012-09-19 → 2012-09-24 (+5d) | 2012-09-24 → 2012-09-27 (+3d) |  |  | 0.62d → 1.38d | 20 → 18 | constraint none → start no earlier than 2012-09-19 |
| 20 | Gerenciar Usuários | 2012-09-12 → 2012-09-24 (+12d) | 2012-09-19 → 2012-10-01 (+12d) | 6.25d → 5d |  | 0.62d → -4d | 15 → 12 | constraint none → start no earlier than 2012-09-18; resources Rômulo → Wander |
| 21 | Gerenciar Empresa | 2012-09-18 → 2012-09-27 (+9d) | 2012-09-25 → 2012-10-03 (+8d) | 6.25d → 5d |  | 34.5d → -5.5d | 8 → 7 |  |
| 22 | Gerenciar Atividades | 2012-09-18 → 2012-09-24 (+6d) | 2012-09-25 → 2012-09-29 (+4d) | 6.25d → 5d |  | 34.5d → -1d | 14 → 6 | constraint none → start no earlier than 2012-09-15 |
| 23 | Manual | 2012-09-26 → 2012-09-29 (+3d) | 2012-09-28 → 2012-10-01 (+3d) | 2.5d → 1.25d |  | 34.5d → -1d |  |  |
| 24 | Store Procedure | 2012-09-26 → 2012-10-04 (+8d) | 2012-09-28 → 2012-10-06 (+8d) |  |  | 34.5d → -5.5d |  |  |
| 25 | Script Banco de Dados | 2012-09-24 → 2012-09-28 (+4d) | 2012-09-25 → 2012-09-28 (+3d) | 1.25d → 0.25d |  | 0.62d → 1.38d |  | constraint none → start no earlier than 2012-09-19 |
| 26 | Diagrama de Classes do Sistema | 2012-09-21 → 2012-10-01 (+10d) | 2012-09-26 → 2012-10-04 (+8d) |  |  | 0d → -4d | 18 → 20 |  |
| 27 | **Entrega 06** | 2012-09-26 → 2012-10-05 (+9d) | 2012-10-22 → 2012-10-20 (-2d) | 20d → 12.5d |  | 0d → 0.38d |  |  |
| 28 | Aplicativo Android | 2012-09-26 → 2012-10-05 (+9d) | 2012-10-11 → 2012-10-20 (+9d) |  |  | 0d → 0.38d |  |  |
| 29 | Testes de Software | 2012-10-11 → 2012-10-06 (-5d) | 2012-10-18 → 2012-10-12 (-6d) |  |  | 0d → 12d | 28 → 23, 24 | resources Túlio; Israel → Israel; Túlio |
| 30 | Avaliação de Interfaces | 2012-10-18 → 2012-10-12 (-6d) | 2012-10-22 → 2012-10-16 (-6d) |  |  | 0d → 15.12d |  |  |
| 31 | **Entrega 05** | 2012-10-11 → 2012-10-16 (+5d) | 2012-11-02 → 2012-10-29 (-4d) | 17.5d → 10.5d |  | 0d → 16.88d |  |  |
| 32 | Casos de Uso no GitHub | 2012-10-22 → 2012-10-16 (-6d) | 2012-10-27 → 2012-10-23 (-4d) |  |  | 0d → 22.38d | 27 → 30 |  |
| 33 | Classes de Teste | 2012-10-27 → 2012-10-16 (-11d) | 2012-11-02 → 2012-10-23 (-10d) |  |  | 0d → 22.38d | 32 → 30 |  |
| 34 | Documentação dos Ciclos de TDD | 2012-10-11 → 2012-10-20 (+9d) | 2012-10-18 → 2012-10-26 (+8d) |  |  | 10.5d → 16.88d | 28, 33 → 28 |  |
| 35 | Prontificação do GitHub Atualizado | 2012-10-18 → 2012-10-26 (+8d) | 2012-10-20 → 2012-10-29 (+9d) |  |  | 10.5d → 16.88d |  |  |

## Version 3 (saved 2012-09-24, file Cronograma de Atividades.mpp)

Note of the change: Marco 1

Last finish 2012-10-29 → 2012-10-31 (+2d). Complete tasks 4 → 13.

Added:

| ID | Task | Duration | Start | Finish | Constraint | Resources |
| --- | --- | --- | --- | --- | --- | --- |
| 6 | Interfaces do Sistema | 0.62d | 2012-09-22 A | 2012-09-23 A | start no earlier than 2012-09-21 | Israel |

Changed:

| ID | Task | Start | Finish | Duration | Complete | Total float | Predecessors | Other |
| --- | --- | --- | --- | --- | --- | --- | --- | --- |
| 1 | **Entrega 03** |  | 2012-09-27 → 2012-09-23 A (-4d) | 21.12d → 17.5d | 44% → 100% | -4.25d → none |  |  |
| 2 | **Especificação** |  | 2012-09-27 → 2012-09-23 A (-4d) | 16.5d → 12.88d | 17% → 100% | -4.25d → none |  |  |
| 3 | Introdução | 2012-09-20 → 2012-09-21 A (+1d) | 2012-09-22 → 2012-09-21 A (-1d) | 2.5d → 0.5d | 0% → 100% | -3.62d → none |  | constraint start no earlier than 2012-09-19 → none |
| 4 | Descrição Geral |  | 2012-09-20 → 2012-09-11 A (-9d) | 2.5d → 3d | 80% → 100% | -4d → none |  | constraint start no earlier than 2012-09-06 → none |
| 5 | **Requisitos Específicos** | 2012-09-20 → 2012-09-21 A (+1d) | 2012-09-27 → 2012-09-23 A (-4d) | 6.25d → 1.62d | 0% → 100% | -4.25d → none |  |  |
| 7 | Requisitos Funcionais | 2012-09-20 → 2012-09-21 A (+1d) | 2012-09-24 → 2012-09-22 A (-2d) | 3d → 0.5d | 0% → 100% | -0.38d → none | none → 8 | constraint start no earlier than 2012-09-19 → none; resources Israel → Túlio |
| 8 | Requisitos Não Funcionais | 2012-09-22 → 2012-09-21 A (-1d) | 2012-09-27 → 2012-09-21 A (-6d) | 3.75d → 0.5d | 0% → 100% | -3.62d → none |  | constraint start no earlier than 2012-09-12 → none |
| 9 | **Diagramas** |  | 2012-09-24 → 2012-09-21 A (-3d) | 18.38d → 16.88d | 73% → 100% | -2.5d → none |  |  |
| 10 | Casos de Uso |  |  |  |  |  |  | constraint start no earlier than 2012-09-01 → none |
| 11 | **Sequência** | 2012-09-20 A | 2012-09-21 → 2012-09-20 A (-1d) | 1d → 0.25d | 0% → 100% | -4d → none |  |  |
| 12 | Gerenciar Permissões de Usuários | 2012-09-20 A | 2012-09-21 → 2012-09-20 A (-1d) | 1d → 0.25d | 0% → 100% | -5.25d → none |  | constraint start no earlier than 2012-09-19 → none |
| 13 | Atividades (incl. Atores) | 2012-09-21 A | 2012-09-24 → 2012-09-21 A (-3d) | 2d → 1d | 0% → 100% | -5.25d → none | 12 → 4 | constraint start no earlier than 2012-09-18 → none |
| 14 | Classes de Domínio |  |  |  |  |  |  | constraint start no earlier than 2012-09-01 → none |
| 15 | Implantação | 2012-09-19 A → 2012-09-14 A (-5d) | 2012-09-20 A → 2012-09-17 A (-3d) |  |  |  |  | constraint start no earlier than 2012-09-15 → none |
| 16 | Banco de Dados |  |  |  |  |  |  | constraint start no earlier than 2012-09-10 → none |
| 17 | **Entrega 04** |  | 2012-10-06 → 2012-10-08 (+2d) | 20.38d → 20.62d | 8% → 11% | -5.5d → -5.75d |  |  |
| 18 | **Código Fonte** |  | 2012-10-03 → 2012-10-08 (+5d) | 17.88d → 20.38d | 11% → 10% | -3.25d → -5.75d |  |  |
| 19 | Gerenciar Clientes |  | 2012-09-24 → 2012-10-02 (+8d) | 5d → 3.75d |  | 1.38d → -5.75d | 16 → 26 |  |
| 20 | Gerenciar Permissões de Usuários | 2012-09-24 → 2012-10-03 (+9d) | 2012-09-27 → 2012-10-08 (+11d) |  |  | 1.38d → -5.75d |  | constraint start no earlier than 2012-09-19 → none |
| 21 | Gerenciar Usuários | 2012-09-24 → 2012-09-25 (+1d) | 2012-10-01 → 2012-09-28 (-3d) | 5d → 3.75d |  | -4d → -2.88d |  | constraint start no earlier than 2012-09-18 → start no earlier than 2012-09-24 |
| 22 | Gerenciar Empresa | 2012-09-27 → 2012-09-25 (-2d) | 2012-10-03 → 2012-09-28 (-5d) | 5d → 3.75d |  | -5.5d → 0.88d | 8 → 7 | constraint none → start no earlier than 2012-09-24 |
| 23 | Gerenciar Atividades | 2012-09-24 → 2012-09-25 (+1d) | 2012-09-29 → 2012-09-28 (-1d) | 5d → 3.75d |  | -1d → -0.38d | 7 → 6 | constraint start no earlier than 2012-09-15 → start no earlier than 2012-09-24 |
| 24 | Manual | 2012-09-29 → 2012-09-28 (-1d) |  |  |  | -1d → -0.38d |  |  |
| 25 | Stored Procedure | 2012-10-04 → 2012-09-21 A (-13d) | 2012-10-06 → 2012-09-24 A (-12d) | 2.5d → 0.5d | 0% → 100% | -5.5d → none | 22 → none | was named Store Procedure; resources Túlio → Rômulo |
| 26 | Script Banco de Dados | 2012-09-28 → 2012-09-12 A (-16d) | 2012-09-28 → 2012-09-12 A (-16d) |  | 0% → 100% | 1.38d → none | 20 → 16 | constraint start no earlier than 2012-09-19 → none |
| 27 | Diagrama de Classes do Sistema | 2012-10-01 → 2012-09-28 (-3d) | 2012-10-04 → 2012-10-03 (-1d) |  |  | -4d → -2.88d |  |  |
| 28 | **Entrega 06** | 2012-10-05 → 2012-10-01 (-4d) | 2012-10-20 → 2012-10-23 (+3d) | 12.5d → 17.88d |  | 0.38d → 2d |  |  |
| 29 | Aplicativo Android | 2012-10-05 → 2012-10-08 (+3d) | 2012-10-20 → 2012-10-23 (+3d) |  |  | 0.38d → -1.38d | 26, 27 → 27, 20 |  |
| 30 | Testes de Software | 2012-10-06 → 2012-10-01 (-5d) | 2012-10-12 → 2012-10-06 (-6d) |  |  | 12d → 12.38d |  |  |
| 31 | Avaliação de Interfaces | 2012-10-12 → 2012-10-06 (-6d) | 2012-10-16 → 2012-10-10 (-6d) |  |  | 15.12d → 12.38d |  |  |
| 32 | **Entrega 05** | 2012-10-16 → 2012-10-10 (-6d) | 2012-10-29 → 2012-10-31 (+2d) | 10.5d → 17.38d |  | 16.88d → 0d |  |  |
| 33 | Casos de Uso no GitHub | 2012-10-16 → 2012-10-10 (-6d) | 2012-10-23 → 2012-10-16 (-7d) |  |  | 22.38d → 12.38d |  |  |
| 34 | Classes de Teste | 2012-10-16 → 2012-10-10 (-6d) | 2012-10-23 → 2012-10-16 (-7d) |  |  | 22.38d → 12.38d |  |  |
| 35 | Documentação dos Ciclos de TDD | 2012-10-20 → 2012-10-23 (+3d) | 2012-10-26 → 2012-10-29 (+3d) |  |  | 16.88d → 0d |  |  |
| 36 | Prontificação do GitHub Atualizado | 2012-10-26 → 2012-10-29 (+3d) | 2012-10-29 → 2012-10-31 (+2d) |  |  | 16.88d → 0d |  |  |

## Version 4 (saved 2012-09-25, file Cronograma de Atividades.mpp)

Note of the change: Marco 1

Last finish 2012-10-31 → 2012-11-07 (+7d).

Changed:

| ID | Task | Start | Finish | Duration | Complete | Total float | Predecessors | Other |
| --- | --- | --- | --- | --- | --- | --- | --- | --- |
| 17 | **Entrega 04** |  | 2012-10-08 → 2012-10-13 (+5d) | 20.62d → 26.12d | 11% → 23% | -5.75d → -3.75d |  |  |
| 18 | **Código Fonte** |  | 2012-10-08 → 2012-10-13 (+5d) | 20.38d → 25.88d | 10% → 16% | -5.75d → -3.75d |  |  |
| 19 | Gerenciar Clientes |  | 2012-10-02 → 2012-10-09 (+7d) |  | 50% → 80% | -5.75d → -11.25d |  |  |
| 20 | Gerenciar Permissões de Usuários | 2012-10-03 → 2012-10-09 (+6d) | 2012-10-08 → 2012-10-13 (+5d) |  |  | -5.75d → -11.25d |  |  |
| 21 | Gerenciar Usuários | 2012-09-25 → 2012-09-27 (+2d) | 2012-09-28 → 2012-10-02 (+4d) |  |  | -2.88d → -2d | 13 → 27 |  |
| 22 | Gerenciar Empresa | 2012-09-25 → 2012-09-26 (+1d) | 2012-09-28 → 2012-10-01 (+3d) |  |  | 0.88d → -0.12d |  | constraint start no earlier than 2012-09-24 → start no earlier than 2012-09-25 |
| 23 | Gerenciar Atividades | 2012-09-25 → 2012-09-26 (+1d) | 2012-09-28 → 2012-10-01 (+3d) |  |  | -0.38d → -1.38d |  | constraint start no earlier than 2012-09-24 → start no earlier than 2012-09-25 |
| 24 | Manual | 2012-09-28 → 2012-10-01 (+3d) | 2012-10-01 → 2012-10-02 (+1d) |  |  | -0.38d → -1.38d |  |  |
| 27 | Diagrama de Classes do Sistema | 2012-09-28 → 2012-09-24 A (-4d) | 2012-10-03 → 2012-09-27 (-6d) |  | 0% → 50% | -2.88d → -2d | 21 → 13 |  |
| 28 | **Entrega 06** | 2012-10-01 → 2012-10-02 (+1d) | 2012-10-23 → 2012-10-30 (+7d) | 17.88d → 22.38d |  |  |  |  |
| 29 | Aplicativo Android | 2012-10-08 → 2012-10-15 (+7d) | 2012-10-23 → 2012-10-30 (+7d) |  |  | -1.38d → -6.88d |  |  |
| 30 | Testes de Software | 2012-10-01 → 2012-10-02 (+1d) | 2012-10-06 → 2012-10-08 (+2d) |  |  | 12.38d → 16.12d |  |  |
| 31 | Avaliação de Interfaces | 2012-10-06 → 2012-10-08 (+2d) | 2012-10-10 → 2012-10-11 (+1d) |  |  | 12.38d → 16.88d |  |  |
| 32 | **Entrega 05** | 2012-10-10 → 2012-10-11 (+1d) | 2012-10-31 → 2012-11-07 (+7d) | 17.38d → 21.88d |  |  |  |  |
| 33 | Casos de Uso no GitHub | 2012-10-10 → 2012-10-11 (+1d) | 2012-10-16 → 2012-10-17 (+1d) |  |  | 12.38d → 16.88d |  |  |
| 34 | Classes de Teste | 2012-10-10 → 2012-10-11 (+1d) | 2012-10-16 → 2012-10-17 (+1d) |  |  | 12.38d → 16.88d |  |  |
| 35 | Documentação dos Ciclos de TDD | 2012-10-23 → 2012-10-30 (+7d) | 2012-10-29 → 2012-11-05 (+7d) |  |  |  |  |  |
| 36 | Prontificação do GitHub Atualizado | 2012-10-29 → 2012-11-05 (+7d) | 2012-10-31 → 2012-11-07 (+7d) |  |  |  |  |  |

## Version 5 (saved 2012-10-23, file Cronograma de Atividades.mpp)

Note of the change: Marco 2

Last finish 2012-11-07 → 2012-10-31 (-7d). Complete tasks 13 → 21.

Changed:

| ID | Task | Start | Finish | Duration | Complete | Total float | Predecessors | Other |
| --- | --- | --- | --- | --- | --- | --- | --- | --- |
| 17 | **Entrega 04** |  | 2012-10-13 → 2012-10-12 A (-1d) | 26.12d → 25d | 23% → 100% | -3.75d → none |  |  |
| 18 | **Código Fonte** |  | 2012-10-13 → 2012-10-12 A (-1d) | 25.88d → 24.75d | 16% → 100% | -3.75d → none |  |  |
| 19 | Gerenciar Clientes |  | 2012-10-09 → 2012-10-04 A (-5d) | 3.75d → 18.12d | 80% → 100% | -11.25d → none |  |  |
| 20 | Gerenciar Permissões de Usuários | 2012-10-09 → 2012-10-10 A (+1d) | 2012-10-13 → 2012-10-11 A (-2d) | 3.75d → 1d | 0% → 100% | -11.25d → none | 19 → 21 |  |
| 21 | Gerenciar Usuários | 2012-09-27 → 2012-10-09 A (+12d) | 2012-10-02 → 2012-10-10 A (+8d) | 3.75d → 1.75d | 0% → 100% | -2d → none |  | constraint start no earlier than 2012-09-24 → start no earlier than 2012-10-08 |
| 22 | Gerenciar Empresa | 2012-09-26 → 2012-10-08 A (+12d) | 2012-10-01 → 2012-10-09 A (+8d) | 3.75d → 1.75d | 0% → 100% | -0.12d → none |  | constraint start no earlier than 2012-09-25 → start no earlier than 2012-10-08 |
| 23 | Gerenciar Atividades | 2012-09-26 → 2012-10-10 A (+14d) | 2012-10-01 → 2012-10-12 A (+11d) | 3.75d → 2.5d | 0% → 100% | -1.38d → none |  | constraint start no earlier than 2012-09-25 → start no earlier than 2012-10-10 |
| 24 | Manual de Implantação | 2012-10-01 → 2012-09-26 A (-5d) | 2012-10-02 → 2012-09-26 A (-6d) | 1.25d → 0.5d | 0% → 100% | -1.38d → none | 23 → 19 | was named Manual; constraint none → start no earlier than 2012-09-25; resources Israel → Rômulo |
| 25 | Stored Procedure |  |  |  |  |  | none → 15 |  |
| 27 | Diagrama de Classes do Sistema | 2012-09-24 A → 2012-09-25 A (+1d) | 2012-09-27 → 2012-09-26 A (-1d) | 3.75d → 1.25d | 50% → 100% | -2d → none |  |  |
| 28 | **Entrega 06** | 2012-10-02 → 2012-10-09 A (+7d) |  | 22.38d → 16.5d | 0% → 63% | 2d → 1d |  |  |
| 29 | Aplicativo Android | 2012-10-15 → 2012-10-24 (+9d) | 2012-10-30 → 2012-10-26 (-4d) | 12.5d → 2.5d |  | -6.88d → 1.12d | 27, 20 → 17 | constraint none → start no earlier than 2012-10-23; resources Rômulo; Wander → Túlio; Wander |
| 30 | Testes de Software | 2012-10-02 → 2012-10-09 A (+7d) | 2012-10-08 → 2012-10-24 A (+16d) | 5d → 12.5d | 0% → 100% | 16.12d → none | 24, 25 → 22 | resources Israel; Túlio → Testes |
| 31 | Avaliação de Interfaces | 2012-10-08 → 2012-10-24 (+16d) | 2012-10-11 → 2012-10-30 (+19d) | 2.5d → 5d |  | 16.88d → 1d | 30 → 17 | constraint none → start no earlier than 2012-10-23; resources Israel; Túlio → Israel |
| 32 | **Entrega 05** | 2012-10-11 → 2012-10-25 (+14d) | 2012-11-07 → 2012-10-31 (-7d) | 21.88d → 5d |  |  |  |  |
| 33 | Casos de Uso no GitHub | 2012-10-11 → 2012-10-25 (+14d) | 2012-10-17 → 2012-10-26 (+9d) | 5d → 1.25d |  | 16.88d → 0d | 31 → 30 | resources Israel → Testes; baseline start 2012-10-23 → none; baseline finish 2012-10-29 → none |
| 34 | Classes de Teste | 2012-10-11 → 2012-10-26 (+15d) | 2012-10-17 → 2012-10-27 (+10d) | 5d → 1.25d |  | 16.88d → 0d | 31 → 33 | resources Túlio → Testes; baseline start 2012-10-30 → none; baseline finish 2012-11-05 → none |
| 35 | Documentação dos Ciclos de TDD | 2012-10-30 → 2012-10-27 (-3d) | 2012-11-05 → 2012-10-30 (-6d) | 5d → 1.25d |  |  | 29 → 34 | resources Wander → Testes; baseline start 2012-11-05 → none; baseline finish 2012-11-10 → none |
| 36 | Prontificação do GitHub Atualizado | 2012-11-05 → 2012-10-30 (-6d) | 2012-11-07 → 2012-10-31 (-7d) | 2d → 1.25d |  |  |  | resources Rômulo → Testes; baseline start 2012-11-10 → none; baseline finish 2012-11-13 → none |

## Version 6 (saved 2012-11-07, file Cronograma de Atividades.mpp)

Note of the change: TDD 1

Last finish 2012-10-31 → 2012-11-14 (+14d). Complete tasks 21 → 23.

Changed:

| ID | Task | Start | Finish | Duration | Complete | Total float | Other |
| --- | --- | --- | --- | --- | --- | --- | --- |
| 28 | **Entrega 06** |  | 2012-10-30 → 2012-11-14 (+15d) | 16.5d → 28.75d | 63% → 81% | 1d → 0d |  |
| 29 | Aplicativo Android | 2012-10-24 → 2012-11-08 (+15d) | 2012-10-26 → 2012-11-14 (+19d) | 2.5d → 5d |  | 1.12d → 0d | constraint start no earlier than 2012-10-23 → start no earlier than 2012-11-07; resources Túlio; Wander → Wander |
| 31 | Avaliação de Interfaces | 2012-10-24 A | 2012-10-30 → 2012-11-03 A (+4d) | 5d → 8.75d | 0% → 100% | 1d → none |  |
| 32 | **Entrega 05** | 2012-10-25 → 2012-11-05 A (+11d) | 2012-10-31 → 2012-11-13 (+13d) | 5d → 6.75d | 0% → 25% | 0d → 1.25d |  |
| 33 | Casos de Uso no GitHub | 2012-10-25 → 2012-11-05 A (+11d) | 2012-10-26 → 2012-11-06 A (+11d) |  | 0% → 100% | 0d → none | constraint none → start no earlier than 2012-11-04 |
| 34 | Classes de Teste | 2012-10-26 → 2012-11-08 (+13d) | 2012-10-27 → 2012-11-09 (+13d) |  |  | 0d → 1.25d | constraint none → start no earlier than 2012-11-07 |
| 35 | Documentação dos Ciclos de TDD | 2012-10-27 → 2012-11-09 (+13d) | 2012-10-30 → 2012-11-10 (+11d) |  |  | 0d → 1.25d | constraint none → start no earlier than 2012-11-07 |
| 36 | Prontificação do GitHub Atualizado | 2012-10-30 → 2012-11-10 (+11d) | 2012-10-31 → 2012-11-13 (+13d) |  |  | 0d → 1.25d | constraint none → start no earlier than 2012-11-04 |
